# 智维集控平台

How a schedule from a web Gantt chart changed from version to version. A marks actual dates.

## Version 1 (saved 2026-06-05)

| ID | WBS | Task | Duration | Start | Finish | Predecessors |
| --- | --- | --- | --- | --- | --- | --- |
| 2 | 1 | **平台基础能力** | 11d | 2026-06-08 | 2026-06-18 |  |
| 3 |  | 数据权限管理 | 2d | 2026-06-08 | 2026-06-09 |  |
| 4 |  | 租户管理 | 2d | 2026-06-10 | 2026-06-11 | 3 |
| 5 |  | 国际化 | 2d | 2026-06-12 | 2026-06-13 | 4 |
| 6 |  | 组织权限管理 | 3d | 2026-06-14 | 2026-06-16 | 5 |
| 7 |  | 审计日志 | 2d | 2026-06-17 | 2026-06-18 | 6 |
| 8 | 2 | **3.6.6 配置管理优化与电站快速接入能力建设** | 24d | 2026-06-19 | 2026-07-12 |  |
| 9 |  | 场站管理 | 2d | 2026-06-19 | 2026-06-20 | 2 |
| 10 |  | 设备类型管理 | 1d | 2026-06-21 | 2026-06-21 | 9 |
| 11 |  | 设备型号管理 | 1d | 2026-06-22 | 2026-06-22 | 10 |
| 12 |  | 设备管理 | 2d | 2026-06-23 | 2026-06-24 | 11 |
| 13 |  | 测点管理 | 2d | 2026-07-01 | 2026-07-02 | 21 |
| 14 |  | 测点物模型映射配置 | 2d | 2026-07-03 | 2026-07-04 | 13 |
| 15 |  | 测点计算规则配置 | 2d | 2026-07-05 | 2026-07-06 | 14 |
| 16 |  | 告警规则配置 | 1d | 2026-07-07 | 2026-07-07 | 15 |
| 17 |  | 告警屏蔽管理 | 1d | 2026-07-08 | 2026-07-08 | 16 |
| 18 |  | 告警通知管理 | 2d | 2026-07-09 | 2026-07-10 | 17 |
| 19 |  | 数据清洗规则管理 | 1d | 2026-07-11 | 2026-07-11 | 18 |
| 20 |  | 数据补录规则管理 | 1d | 2026-07-12 | 2026-07-12 | 19 |
| 21 | 3 | **3.5.1 一体化驾驶舱指标体系梳理** | 6d | 2026-06-25 | 2026-06-30 |  |
| 22 |  | 指标管理 | 1d | 2026-06-25 | 2026-06-25 | 12 |
| 23 |  | 物模型管理 | 5d | 2026-06-26 | 2026-06-30 | 22 |
| 24 | 4 | **3.5.3 一体化驾驶舱指标数据计算引擎开发** | 13d | 2026-07-16 | 2026-07-28 |  |
| 25 |  | 实时/历史流数据处理引擎 | 5d | 2026-07-16 | 2026-07-20 | 119 |
| 26 |  | 数据清洗服务 | 1d | 2026-07-21 | 2026-07-21 | 25 |
| 27 |  | 告警计算服务器 | 1d | 2026-07-22 | 2026-07-22 | 26 |
| 28 |  | 计算规则引擎 | 2d | 2026-07-23 | 2026-07-24 | 27 |
| 29 |  | 数据存储服务 | 1d | 2026-07-26 | 2026-07-26 | 28, 31 |
| 30 |  | 缓存同步服务 | 2d | 2026-07-27 | 2026-07-28 | 29 |
| 31 |  | 3.6.3 时序数据库与采集数据存储架构优化 | 1d | 2026-07-25 | 2026-07-25 | 28 |
| 32 | 6 | **3.3 一体化驾驶舱专业视图板块** | 22d | 2026-07-29 | 2026-08-19 |  |
| 33 |  | 混合能源类型场站概览 | 2d | 2026-07-29 | 2026-07-30 | 24 |
| 34 |  | 光伏场站概览 | 1d | 2026-07-31 | 2026-07-31 | 33 |
| 35 |  | 逆变器状态监视 | 1d | 2026-08-01 | 2026-08-01 | 34 |
| 36 |  | 设备发电监视 | 1d | 2026-08-02 | 2026-08-02 | 35 |
| 37 |  | 升压站监视 | 1d | 2026-08-03 | 2026-08-03 | 36 |
| 38 |  | 集电线路监视 | 1d | 2026-08-04 | 2026-08-04 | 37 |
| 39 |  | 箱变监视 | 1d | 2026-08-05 | 2026-08-05 | 38 |
| 40 |  | 逆变器监视 | 1d | 2026-08-06 | 2026-08-06 | 39 |
| 41 |  | 气象站监视 | 1d | 2026-08-07 | 2026-08-07 | 40 |
| 42 |  | 电表监视 | 1d | 2026-08-08 | 2026-08-08 | 41 |
| 43 |  | 其他设备监视 | 1d | 2026-08-09 | 2026-08-09 | 42 |
| 44 |  | 光伏场站概览 | 1d | 2026-08-10 | 2026-08-10 | 43 |
| 45 |  | 风机状态监视 | 1d | 2026-08-11 | 2026-08-11 | 44 |
| 46 |  | 测风塔监视 | 1d | 2026-08-12 | 2026-08-12 | 45 |
| 47 |  | 储能电站概览 | 1d | 2026-08-13 | 2026-08-13 | 46 |
| 48 |  | 储能单元监视 | 1d | 2026-08-14 | 2026-08-14 | 47 |
| 49 |  | PCS监视 | 1d | 2026-08-15 | 2026-08-15 | 48 |
| 50 |  | 电池堆监视 | 1d | 2026-08-16 | 2026-08-16 | 49 |
| 51 |  | 电池簇监视 | 1d | 2026-08-17 | 2026-08-17 | 50 |
| 52 |  | 电池包监视 | 1d | 2026-08-18 | 2026-08-18 | 51 |
| 53 |  | 电芯监视 | 1d | 2026-08-19 | 2026-08-19 | 52 |
| 54 | 7 | **3.1.5 智慧场站门户** | 7d | 2026-08-01 | 2026-08-07 |  |
| 55 |  | 场站总览 | 1d | 2026-08-01 | 2026-08-01 | 34 |
| 56 |  | 区域总览 | 1d | 2026-08-02 | 2026-08-02 | 55 |
| 57 |  | 样板电站视图 | 1d | 2026-08-03 | 2026-08-03 | 56 |
| 58 |  | 标杆电站视图 | 1d | 2026-08-04 | 2026-08-04 | 57 |
| 59 |  | 低发电绩效视图 | 1d | 2026-08-05 | 2026-08-05 | 58 |
| 60 |  | 低并网消纳视图 | 1d | 2026-08-06 | 2026-08-06 | 59 |
| 61 |  | 高风险电站视图 | 1d | 2026-08-07 | 2026-08-07 | 60 |
| 62 | 8 | **3.6.1 风光储一体化数据结构与档案体系升级** | 7d | 2026-07-12 | 2026-07-18 |  |
| 63 |  | 公司档案迁移 | 1d | 2026-07-12 | 2026-07-12 | 19 |
| 64 |  | 型号档案迁移 | 1d | 2026-07-13 | 2026-07-13 | 63 |
| 65 |  | 设备分类迁移 | 1d | 2026-07-14 | 2026-07-14 | 64 |
| 66 |  | 设备档案迁移 | 1d | 2026-07-15 | 2026-07-15 | 65 |
| 67 |  | 电站档案迁移 | 1d | 2026-07-16 | 2026-07-16 | 66 |
| 68 |  | 测点配置迁移 | 2d | 2026-07-17 | 2026-07-18 | 67 |
| 69 | 9 | **3.6.4 原有光伏电站历史数据迁移实施** | 5d | 2026-07-19 | 2026-07-23 |  |
| 70 |  | 实时数据迁移 | 3d | 2026-07-19 | 2026-07-21 | 68 |
| 71 |  | 统计数据迁移 | 2d | 2026-07-22 | 2026-07-23 | 70 |

| ID | WBS | Task | Duration | Start | Finish | Predecessors |
| --- | --- | --- | --- | --- | --- | --- |
| 72 | 10 | **3.6.2 风光储统一运维功能迁移** | 15d | 2026-11-14 | 2026-11-28 |  |
| 73 |  | 运行日志数据迁移 | 1d | 2026-11-14 | 2026-11-14 | 71, 161 |
| 74 |  | 缺陷单数据迁移 | 1d | 2026-11-15 | 2026-11-15 | 73 |
| 75 |  | 检修预试数据迁移 | 1d | 2026-11-16 | 2026-11-16 | 74 |
| 76 |  | 巡检数据迁移 | 1d | 2026-11-17 | 2026-11-17 | 75 |
| 77 |  | 抢修单数据迁移 | 1d | 2026-11-18 | 2026-11-18 | 76 |
| 78 |  | 典型工作票数据迁移 | 1d | 2026-11-19 | 2026-11-19 | 77 |
| 79 |  | 正式工作牌数据迁移 | 1d | 2026-11-20 | 2026-11-20 | 78 |
| 80 |  | 典型操作票数据迁移 | 1d | 2026-11-21 | 2026-11-21 | 79 |
| 81 |  | 正式操作票数据迁移 | 1d | 2026-11-22 | 2026-11-22 | 80 |
| 82 |  | 备品备件规格数据迁移 | 1d | 2026-11-23 | 2026-11-23 | 81 |
| 83 |  | 仓库数据迁移 | 1d | 2026-11-24 | 2026-11-24 | 82 |
| 84 |  | 库存数据迁移 | 1d | 2026-11-25 | 2026-11-25 | 83 |
| 85 |  | 出入库数据迁移 | 1d | 2026-11-26 | 2026-11-26 | 84 |
| 86 |  | 库存盘点数据迁移 | 1d | 2026-11-27 | 2026-11-27 | 85 |
| 87 |  | 运维文档数据迁移 | 1d | 2026-11-28 | 2026-11-28 | 86 |
| 88 | 11 | **3.7.1 智慧场站档案资料数据接入** | 6d | 2026-07-19 | 2026-07-24 |  |
| 89 |  | 电站数据同步接口 | 1d | 2026-07-19 | 2026-07-19 | 68 |
| 90 |  | 设备类型数据同步接口 | 1d | 2026-07-20 | 2026-07-20 | 89 |
| 91 |  | 型号数据同步接口 | 1d | 2026-07-21 | 2026-07-21 | 90 |
| 92 |  | 设备数据同步接口 | 1d | 2026-07-22 | 2026-07-22 | 91 |
| 93 |  | 同步任务管理和失败重试功能开发 | 2d | 2026-07-23 | 2026-07-24 | 92 |
| 94 | 12 | **3.7.2 智慧场站运行监测类数据接入** | 6d | 2026-07-25 | 2026-07-30 |  |
| 95 |  | 设备运行数据接口 | 2d | 2026-07-25 | 2026-07-26 | 93 |
| 96 |  | 电站运行数据接口 | 2d | 2026-07-27 | 2026-07-28 | 95 |
| 97 |  | 事件数据接口 | 2d | 2026-07-29 | 2026-07-30 | 96 |
| 98 |  | 3.7.3 智慧场站系统参数类数据接入与同步建设 | 2d | 2026-07-31 | 2026-08-01 | 97 |
| 99 | 14 | **3.6.5 面向一体化驾驶舱的集成适配开发** | 8d | 2026-08-20 | 2026-08-27 |  |
| 100 |  | 档案数据查询集成 | 2d | 2026-08-20 | 2026-08-21 | 53 |
| 101 |  | 实时运行数据集成 | 2d | 2026-08-22 | 2026-08-23 | 100 |
| 102 |  | 历史运行数据集成 | 2d | 2026-08-24 | 2026-08-25 | 101 |
| 103 |  | 统计数据集成 | 2d | 2026-08-26 | 2026-08-27 | 102 |
| 104 | 15 | **3.5.2 一体化驾驶舱指标数据集市设计开发** | 8d | 2026-08-28 | 2026-09-04 |  |
| 105 |  | 档案类数据集市 | 2d | 2026-08-28 | 2026-08-29 | 103 |
| 106 |  | 运行类数据集市 | 2d | 2026-08-30 | 2026-08-31 | 105 |
| 107 |  | 数据集市指标管理 | 2d | 2026-09-01 | 2026-09-02 | 106 |
| 108 |  | 数据集市计算任务管理 | 2d | 2026-09-03 | 2026-09-04 | 107 |
| 109 | 16 | **3.5.4 一体化驾驶舱指标数据服务接口** | 8d | 2026-09-05 | 2026-09-12 |  |
| 110 |  | 指标查询接口 | 2d | 2026-09-05 | 2026-09-06 | 108 |
| 111 |  | 趋势分析接口 | 1d | 2026-09-07 | 2026-09-07 | 110 |
| 112 |  | 排行接口 | 1d | 2026-09-08 | 2026-09-08 | 111 |
| 113 |  | 明细接口 | 1d | 2026-09-09 | 2026-09-09 | 112 |
| 114 |  | 对象接口 | 1d | 2026-09-10 | 2026-09-10 | 113 |
| 115 |  | 证据接口 | 1d | 2026-09-11 | 2026-09-11 | 114 |
| 116 |  | 筛选维度接口 | 1d | 2026-09-12 | 2026-09-12 | 115 |
| 117 | 17 | **3.5.5 一体化驾驶舱指标数据实施** | 10d | 2026-07-13 | 2026-07-22 |  |
| 118 |  | 指标配置加载 | 1d | 2026-07-13 | 2026-07-13 | 8 |
| 119 |  | 数据接入服务 | 2d | 2026-07-14 | 2026-07-15 | 118 |
| 120 |  | 历史数据补齐服务 | 4d | 2026-07-16 | 2026-07-19 | 4, 119 |
| 121 |  | 数据质量统计 | 3d | 2026-07-20 | 2026-07-22 | 120 |
| 122 | 18 | **3.1.1 展示汇报门户** | 7d | 2026-09-13 | 2026-09-19 |  |
| 123 |  | 宏观业务布局 | 1d | 2026-09-13 | 2026-09-13 | 32, 109, 117 |
| 124 |  | 业务规模与服务版图 | 1d | 2026-09-14 | 2026-09-14 | 123 |
| 125 |  | 实时运行与运营成果 | 1d | 2026-09-15 | 2026-09-15 | 124 |
| 126 |  | 数字能源体系与平台能力 | 1d | 2026-09-16 | 2026-09-16 | 125 |
| 127 |  | 电力交易与市场化运营能力 | 1d | 2026-09-17 | 2026-09-17 | 126 |
| 128 |  | 社会责任与绿色价值 | 1d | 2026-09-18 | 2026-09-18 | 127 |
| 129 |  | 未来战略与发展路线图 | 1d | 2026-09-19 | 2026-09-19 | 128 |
| 130 | 19 | **3.1.2 经营决策门户** | 12d | 2026-09-20 | 2026-10-01 |  |
| 131 |  | 资产经营全景 | 2d | 2026-09-20 | 2026-09-21 | 122 |
| 132 |  | 发电表现与能力释放 | 2d | 2026-09-22 | 2026-09-23 | 131 |
| 133 |  | 收入利润与现金回报 | 2d | 2026-09-24 | 2026-09-25 | 132 |
| 134 |  | 运维效率与价值支撑 | 2d | 2026-09-26 | 2026-09-27 | 133 |
| 135 |  | 客户经营与履约价值 | 2d | 2026-09-28 | 2026-09-29 | 134 |
| 136 |  | 市场收益与交易优化 | 2d | 2026-09-30 | 2026-10-01 | 135 |
| 137 | 20 | **3.1.3 运维管理门户** | 7d | 2026-10-02 | 2026-10-08 |  |
| 138 |  | 运维总览 | 1d | 2026-10-02 | 2026-10-02 | 130 |
| 139 |  | 运行状态摘要 | 1d | 2026-10-03 | 2026-10-03 | 138 |
| 140 |  | 告警与故障摘要 | 1d | 2026-10-04 | 2026-10-04 | 139 |
| 141 |  | 工单与巡检摘要 | 1d | 2026-10-05 | 2026-10-05 | 140 |

| ID | WBS | Task | Duration | Start | Finish | Predecessors |
| --- | --- | --- | --- | --- | --- | --- |
| 142 |  | 可靠性与损失摘要 | 1d | 2026-10-06 | 2026-10-06 | 141 |
| 143 |  | 效率与价值摘要 | 1d | 2026-10-07 | 2026-10-07 | 142 |
| 144 |  | 重点待办与下钻入口 | 1d | 2026-10-08 | 2026-10-08 | 143 |
| 145 | 21 | **3.1.4 电力交易门户** | 10d | 2026-07-29 | 2026-08-07 |  |
| 146 |  | 交易系统数据同步接口 | 5d | 2026-07-29 | 2026-08-02 | 24 |
| 147 |  | 交易规模总览 | 1d | 2026-08-03 | 2026-08-03 | 146 |
| 148 |  | 交易结构分析 | 1d | 2026-08-04 | 2026-08-04 | 147 |
| 149 |  | 市场价格监测 | 1d | 2026-08-05 | 2026-08-05 | 148 |
| 150 |  | 交易收益分析 | 1d | 2026-08-06 | 2026-08-06 | 149 |
| 151 |  | 风险与偏差控制 | 1d | 2026-08-07 | 2026-08-07 | 150 |
| 152 | 22 | **3.2.1 资产运营场景** | 16d | 2026-10-09 | 2026-10-24 |  |
| 153 |  | 资产规模管理 | 2d | 2026-10-09 | 2026-10-10 | 137 |
| 154 |  | 资产分布与布局 | 2d | 2026-10-11 | 2026-10-12 | 153 |
| 155 |  | 资产运行态势 | 2d | 2026-10-13 | 2026-10-14 | 154 |
| 156 |  | 发电运营分析 | 2d | 2026-10-15 | 2026-10-16 | 155 |
| 157 |  | 发电能力分析 | 2d | 2026-10-17 | 2026-10-18 | 156 |
| 158 |  | 资产收益分析 | 2d | 2026-10-19 | 2026-10-20 | 157 |
| 159 |  | 资产效率分析 | 2d | 2026-10-21 | 2026-10-22 | 158 |
| 160 |  | 资产对标分析 | 2d | 2026-10-23 | 2026-10-24 | 159 |
| 161 | 23 | **3.2.2 运维执行场景** | 20d | 2026-10-25 | 2026-11-13 |  |
| 162 |  | 设备运行状态 | 2d | 2026-10-25 | 2026-10-26 | 152 |
| 163 |  | 告警管理 | 2d | 2026-10-27 | 2026-10-28 | 162 |
| 164 |  | 故障事件管理 | 2d | 2026-10-29 | 2026-10-30 | 163 |
| 165 |  | 工单管理 | 5d | 2026-10-31 | 2026-11-04 | 164 |
| 166 |  | 巡检维护管理 | 5d | 2026-11-05 | 2026-11-09 | 165 |
| 167 |  | 运维效率分析 | 2d | 2026-11-10 | 2026-11-11 | 166 |
| 168 |  | 运维价值分析 | 2d | 2026-11-12 | 2026-11-13 | 167 |
| 169 | 24 | **3.2.3 电力交易场景** | 6d | 2026-08-08 | 2026-08-13 |  |
| 170 |  | 交易规模分析 | 1d | 2026-08-08 | 2026-08-08 | 145 |
| 171 |  | 交易结构分析 | 1d | 2026-08-09 | 2026-08-09 | 170 |
| 172 |  | 市场价格监测 | 1d | 2026-08-10 | 2026-08-10 | 171 |
| 173 |  | 交易收益分析 | 1d | 2026-08-11 | 2026-08-11 | 172 |
| 174 |  | 交易风险与偏差控制 | 1d | 2026-08-12 | 2026-08-12 | 173 |
| 175 |  | 交易预测与策略支撑 | 1d | 2026-08-13 | 2026-08-13 | 174 |
| 176 | 25 | **3.2.4 客户价值场景** | 7d | 2026-08-14 | 2026-08-20 |  |
| 177 |  | 客户规模与结构 | 1d | 2026-08-14 | 2026-08-14 | 169 |
| 178 |  | 客户资产服务 | 1d | 2026-08-15 | 2026-08-15 | 177 |
| 179 |  | 客户履约管理 | 1d | 2026-08-16 | 2026-08-16 | 178 |
| 180 |  | 客户收益价值 | 1d | 2026-08-17 | 2026-08-17 | 179 |
| 181 |  | 客户服务质量 | 1d | 2026-08-18 | 2026-08-18 | 180 |
| 182 |  | 客户满意度 | 1d | 2026-08-19 | 2026-08-19 | 181 |
| 183 |  | 客户合作生态 | 1d | 2026-08-20 | 2026-08-20 | 182 |
| 184 | 26 | **3.2.5 社会贡献场景** | 6d | 2026-08-21 | 2026-08-26 |  |
| 185 |  | 清洁能源供给贡献 | 1d | 2026-08-21 | 2026-08-21 | 176 |
| 186 |  | 碳减排贡献 | 1d | 2026-08-22 | 2026-08-22 | 185 |
| 187 |  | 绿电与绿证价值 | 1d | 2026-08-23 | 2026-08-23 | 186 |
| 188 |  | ESG与绿色发展指标 | 1d | 2026-08-24 | 2026-08-24 | 187 |
| 189 |  | 区域能源转型贡献 | 1d | 2026-08-25 | 2026-08-25 | 188 |
| 190 |  | 社会价值表达 | 1d | 2026-08-26 | 2026-08-26 | 189 |

## Version 2 (saved 2026-06-05)

Last finish 2026-11-28 → 2026-12-03 (+5d).

Added:

| ID | Task | Duration | Start | Finish | Predecessors |
| --- | --- | --- | --- | --- | --- |
| 189 | 客户培训 | 5d | 2026-11-29 | 2026-12-03 | 70 |
| 190 | 新场站数据接入 | 1d | 2026-06-08 | 2026-06-08 |  |

Removed: 3 数据权限管理; 6 组织权限管理

Changed:

| ID | Task | Predecessors |
| --- | --- | --- |
| 3 | 租户管理 | 数据权限管理 → none |
| 5 | 审计日志 | 组织权限管理 → none |

## Version 3 (saved 2026-06-09)

Last finish stays 2026-12-03.

Changed:

| ID | Task | Start | Finish | Duration | Predecessors |
| --- | --- | --- | --- | --- | --- |
| 190 | 新场站数据接入 | 2026-06-08 → 2026-08-08 (+61d) | 2026-06-08 → 2026-08-27 (+80d) | 1d → 20d | none → 52 |
